# CRONOGRAMA

Schedule from MS Project, 2024-05-27 to 2024-08-17.

## Calendars

- Ruben Beltran: Mon-Sat 09:00-15:00; Sun off. Exceptions (off unless hours are given): 2023-01-01 to 2032-01-01 (Año Nuevo, recurring), 2023-05-01 to 2032-05-01 (Dia del Trabajo, recurring), 2023-06-29 to 2032-06-29 (Dia de San Pedro y San Pablo, recurring), 2023-07-28 to 2032-07-28 (Fiestas Patrias-1, recurring), 2023-07-29 to 2032-07-29 (Fiestas Patrias-2, recurring), 2023-08-30 to 2032-08-30 (Santa Rosa de Lima, recurring), 2023-10-08 to 2032-10-08 (Combate de Angamos, recurring), 2023-11-01 to 2032-11-01 (Dia de todos los Santos, recurring), 2023-12-08 to 2032-12-08 (Dia de la Inmaculada Concepcion, recurring), 2023-12-25 to 2032-12-25 (Navidad, recurring).

## Schedule

| ID | WBS | Task | Duration | Start | Finish | Predecessors | Total slack | Free slack |
| --- | --- | --- | --- | --- | --- | --- | --- | --- |
| 1 | 01 | **"CREACION DEL SERVICIO DE AGUA POTABLE Y SANEAMIENTO RURAL EN AGUA BLANCA, DISTRITO DE HUAMACHUCO, PROVINCIA DE SANCHEZ CARRION – LA LIBERTAD"** | 52d | 2024-05-27 | 2024-08-17 |  | 0d |  |
| 2 | 01.01 | **CAPTACIÓN** | 18d | 2024-05-27 | 2024-06-22 |  | 0d |  |
| 3 | 01.01.01 | TRABAJOS PRELIMINARES | 2d | 2024-05-27 | 2024-05-29 |  | 0d |  |
| 4 | 01.01.02 | MOVIMIENTO DE TIERRAS | 2d | 2024-05-29 | 2024-06-01 | 3 | 0d |  |
| 5 | 01.01.03 | OBRAS DE CONCRETO SIMPLE | 3d | 2024-06-01 | 2024-06-06 | 4 | 0d |  |
| 6 | 01.01.04 | OBRAS DE CONCRETO ARMADO | 2d | 2024-06-06 | 2024-06-08 | 5 | 0d |  |
| 7 | 01.01.05 | REVOQUES ENLUCIDOS Y MOLDURAS | 2d | 2024-06-10 | 2024-06-12 | 6 | 0d |  |
| 8 | 01.01.06 | FILTROS | 1d | 2024-06-12 | 2024-06-13 | 7 | 34d | 0d |
| 9 | 01.01.07 | PINTURA | 2d | 2024-06-14 | 2024-06-17 | 8 | 34d | 0d |
| 10 | 01.01.08 | VALVULAS Y ACCESORIOS | 1d | 2024-06-17 | 2024-06-18 | 9 | 34d | 0d |
| 11 | 01.01.09 | CARPINTERIA METALICA | 1d | 2024-06-19 | 2024-06-20 | 10 | 34d | 0d |
| 12 | 01.01.10 | CERCO PERIMETRICO | 2d | 2024-06-20 | 2024-06-22 | 11 | 34d |  |
| 13 | 01.01.11 | OBRAS DE CONCRETO SIMPLE | 2d | 2024-06-19 | 2024-06-21 | 32 | 34d | 0d |
| 14 | 01.01.12 | VARIOS | 1d | 2024-06-21 | 2024-06-22 | 13 | 34d |  |
| 15 | 01.02 | **LINEA DE CONDUCCION (L = 966.33 m)** | 30d | 2024-05-29 | 2024-07-16 |  | 20d |  |
| 16 | 01.02.01 | **LINEA DE CONDUCCION** | 16d | 2024-05-29 | 2024-06-22 |  | 20d |  |
| 17 | 01.02.01.01 | OBRAS PRELIMINARES | 3d | 2024-05-29 | 2024-06-03 | 3 | 20d | 0d |
| 18 | 01.02.01.02 | MOVIMIENTO DE TIERRAS | 6d | 2024-06-03 | 2024-06-12 | 17 | 20d | 0d |
| 19 | 01.02.01.03 | SUMINISTRO E INSTALACION DE TUBERIAS | 4d | 2024-06-12 | 2024-06-18 | 18 | 34d | 0d |
| 20 | 01.02.01.04 | SUMINISTRO E INSTALACION DE ACCESORIOS EN LINEA DE CONDUCCION. | 3d | 2024-06-19 | 2024-06-22 | 19 | 34d |  |
| 21 | 1.2.2 | **CAMARA ROMPE PRESION TIPO VI (04 UND)** | 21d | 2024-06-12 | 2024-07-16 |  | 20d |  |
| 22 | 1.2.2.1 | TRABAJOS PRELIMINARES | 1d | 2024-06-12 | 2024-06-13 | 18 | 20d | 0d |
| 23 | 1.2.2.2 | MOVIMIENTO DE TIERRAS | 6d | 2024-06-14 | 2024-06-22 | 22 | 20d | 0d |
| 24 | 1.2.2.3 | OBRAS DE CONCRETO SIMPLE | 3d | 2024-06-24 | 2024-06-27 | 23 | 20d | 0d |
| 25 | 1.2.2.4 | OBRAS DE CONCRETO ARMADO | 3d | 2024-06-28 | 2024-07-03 | 24 | 20d | 0d |
| 26 | 1.2.2.5 | REVOQUES ENLUCIDOS Y MOLDURAS | 2d | 2024-07-04 | 2024-07-06 | 25 | 20d | 0d |
| 27 | 1.2.2.6 | PINTURA | 2d | 2024-07-06 | 2024-07-10 | 26 | 20d | 0d |
| 28 | 1.2.2.7 | CARPINTERIA METALICA | 2d | 2024-07-10 | 2024-07-12 | 27 | 20d | 0d |
| 29 | 1.2.2.8 | ACCESORIOS | 2d | 2024-07-13 | 2024-07-16 | 28 | 20d |  |

| ID | WBS | Task | Duration | Start | Finish | Predecessors | Total slack | Free slack |
| --- | --- | --- | --- | --- | --- | --- | --- | --- |
| 30 | 01.03 | **CAMARA DE REUNION (01 UND)** | 13d | 2024-06-12 | 2024-07-03 |  | 0d |  |
| 31 | 01.03.01 | TRABAJOS PRELIMINARES | 1d | 2024-06-12 | 2024-06-13 | 7 | 0d |  |
| 32 | 01.03.02 | MOVIMIENTO DE TIERRAS | 3d | 2024-06-14 | 2024-06-18 | 31 | 28d | 0d |
| 33 | 01.03.03 | OBRAS DE CONCRETO SIMPLE | 2d | 2024-06-19 | 2024-06-21 | 32 | 28d | 0d |
| 34 | 01.03.04 | OBRAS DE CONCRETO ARMADO | 2d | 2024-06-21 | 2024-06-25 | 33 | 28d | 0d |
| 35 | 01.03.05 | TARRAJEOS | 2d | 2024-06-25 | 2024-06-27 | 34 | 28d | 0d |
| 36 | 01.03.06 | PINTURA | 1d | 2024-06-28 | 2024-07-01 | 35 | 28d | 0d |
| 37 | 01.03.07 | VALVULAS Y ACCESORIOS | 1d | 2024-07-01 | 2024-07-02 | 36 | 28d | 0d |
| 38 | 01.03.08 | CARPINTERIA METALICA | 1d | 2024-07-02 | 2024-07-03 | 37 | 28d |  |
| 39 | 01.04 | **RESERVORIO APOYADO DE 5m3** | 22d | 2024-06-14 | 2024-07-19 |  | 0d |  |
| 40 | 01.04.01 | TRABAJOS PRELIMINARES | 2d | 2024-06-14 | 2024-06-17 | 31 | 0d |  |
| 41 | 01.04.02 | **ESTRUCTURAS** | 10d | 2024-06-17 | 2024-07-03 |  | 0d |  |
| 42 | 01.04.02.01 | MOVIMIENTO DE TIERRAS | 2d | 2024-06-17 | 2024-06-20 | 40 | 0d |  |
| 43 | 01.04.02.02 | OBRAS DE CONCRETO SIMPLE | 3d | 2024-06-20 | 2024-06-25 | 42 | 18d | 0d |
| 44 | 01.04.02.03 | OBRAS DE CONCRETO ARMADO | 5d | 2024-06-25 | 2024-07-03 | 43 | 18d | 0d |
| 45 | 01.04.03 | **ARQUITECTURA** | 4d | 2024-07-04 | 2024-07-10 |  | 18d |  |
| 46 | 01.04.03.01 | REVOQUES ENLUCIDOS Y MOLDURAS | 2d | 2024-07-04 | 2024-07-06 | 44 | 18d | 0d |
| 47 | 01.04.03.02 | PINTURA | 1d | 2024-07-06 | 2024-07-08 | 46 | 18d | 0d |
| 48 | 01.04.03.03 | VARIOS | 1d | 2024-07-09 | 2024-07-10 | 47 | 18d | 0d |
| 49 | 01.04.04 | **CASETA DE CLORACION** | 4d | 2024-07-10 | 2024-07-16 |  | 18d |  |
| 50 | 01.04.04.01 | CONCRETO ARMADO | 2d | 2024-07-10 | 2024-07-12 | 48 | 18d | 0d |
| 51 | 01.04.04.02 | REVOQUES ENLUCIDOS Y MOLDURAS | 1d | 2024-07-13 | 2024-07-15 | 50 | 18d | 0d |
| 52 | 01.04.04.03 | VARIOS | 1d | 2024-07-15 | 2024-07-16 | 51 | 18d | 0d |
| 53 | 01.04.05 | **CASETA DE VALVULAS (RESERVORIO)** | 2d | 2024-07-16 | 2024-07-19 |  | 18d |  |
| 54 | 01.04.05.01 | ESTRUCTURAS | 1d | 2024-07-16 | 2024-07-17 | 52 | 18d | 0d |
| 55 | 01.04.05.02 | ARQUITECTURA | 1d | 2024-07-18 | 2024-07-19 | 54 | 18d |  |

| ID | WBS | Task | Duration | Start | Finish | Predecessors | Total slack | Free slack |
| --- | --- | --- | --- | --- | --- | --- | --- | --- |
| 56 | 01.04.06 | **CERCO PERIMETRICO** | 6d | 2024-06-17 | 2024-06-26 |  | 32d |  |
| 57 | 01.04.06.01 | TRABAJOS PRELIMINARES | 1d | 2024-06-17 | 2024-06-18 | 40 | 32d | 0d |
| 58 | 01.04.06.02 | MOVIMIENTO DE TIERRAS | 2d | 2024-06-19 | 2024-06-21 | 57 | 32d | 0d |
| 59 | 01.04.06.03 | OBRAS DE CONCRETO SIMPLE | 2d | 2024-06-21 | 2024-06-25 | 58 | 32d | 0d |
| 60 | 01.04.06.04 | VARIOS | 1d | 2024-06-25 | 2024-06-26 | 59 | 32d |  |
| 61 | 01.05 | **RED DE DISTRIBUCION** | 15d | 2024-06-20 | 2024-07-15 |  | 0d |  |
| 62 | 01.05.01 | **RED DE DISTRIBUCION (L = 4471.94 m)** | 15d | 2024-06-20 | 2024-07-15 |  | 0d |  |
| 63 | 01.05.01.01 | TRABAJOS PRELIMINARES | 2d | 2024-06-20 | 2024-06-22 | 42 | 0d |  |
| 64 | 01.05.01.02 | MOVIMIENTO DE TIERRAS | 6d | 2024-06-24 | 2024-07-03 | 63 | 0d |  |
| 65 | 01.05.01.03 | SUMINISTRO E INSTALACION DE TUBERIAS | 4d | 2024-07-04 | 2024-07-10 | 64 | 21d | 0d |
| 66 | 01.05.01.04 | SUMINISTRO E INSTALACION DE ACCESORIOS | 3d | 2024-07-10 | 2024-07-15 | 65 | 21d |  |
| 67 | 01.06 | **PASES AEREOS** | 8d | 2024-07-04 | 2024-07-16 |  | 0d |  |
| 68 | 01.06.01 | **PASE AEREO (L = 25 m - 01 UND)** | 8d | 2024-07-04 | 2024-07-16 |  | 0d |  |
| 69 | 01.06.01.01 | TRABAJOS PRELIMINARES | 1d | 2024-07-04 | 2024-07-05 | 64 | 0d |  |
| 70 | 01.06.01.02 | MOVIMIENTO DE TIERRAS | 2d | 2024-07-05 | 2024-07-08 | 69 | 20d | 0d |
| 71 | 01.06.01.03 | OBRAS DE CONCRETO | 2d | 2024-07-09 | 2024-07-11 | 70 | 20d | 0d |
| 72 | 01.06.01.04 | ELEMENTOS METALICOS DE SOPORTE | 2d | 2024-07-11 | 2024-07-15 | 71 | 20d | 0d |
| 73 | 01.06.01.05 | SUMINISTRO E INSTALACION DE TUBERIAS | 1d | 2024-07-15 | 2024-07-16 | 72 | 20d |  |
| 74 | 01.07 | **CAMARA ROMPE PRESION TIPO VII (01 UND)** | 11d | 2024-07-05 | 2024-07-22 |  | 0d |  |
| 75 | 01.07.01 | TRABAJOS PRELIMINARES | 1d | 2024-07-05 | 2024-07-06 | 69 | 0d |  |
| 76 | 01.07.02 | MOVIMIENTO DE TIERRAS | 2d | 2024-07-06 | 2024-07-10 | 75 | 0d |  |
| 77 | 01.07.03 | OBRAS DE CONCRETO SIMPLE | 2d | 2024-07-10 | 2024-07-12 | 76 | 16d | 0d |
| 78 | 01.07.04 | OBRAS DE CONCRETO ARMADO | 2d | 2024-07-13 | 2024-07-16 | 77 | 16d | 0d |
| 79 | 01.07.05 | REVOQUES ENLUCIDOS Y MOLDURAS | 1d | 2024-07-16 | 2024-07-17 | 78 | 16d | 0d |
| 80 | 01.07.06 | PINTURA | 1d | 2024-07-18 | 2024-07-19 | 79 | 16d | 0d |
| 81 | 01.07.07 | CARPINTERIA METALICA | 1d | 2024-07-19 | 2024-07-20 | 80 | 16d | 0d |
| 82 | 01.07.08 | ACCESORIOS | 1d | 2024-07-20 | 2024-07-22 | 81 | 16d |  |

| ID | WBS | Task | Duration | Start | Finish | Predecessors | Total slack |
| --- | --- | --- | --- | --- | --- | --- | --- |
| 83 | 1.8 | **CONEXIONES DOMICILIARIAS** | 24d | 2024-07-10 | 2024-08-17 |  | 0d |
| 84 | 1.8.1 | **CONEXIONES DOMICILIARIAS (140 UND)** | 24d | 2024-07-10 | 2024-08-17 |  | 0d |
| 85 | 1.8.1.1 | TRABAJOS PRELIMINARES | 4d | 2024-07-10 | 2024-07-16 | 76 | 0d |
| 86 | 1.8.1.2 | MOVIMIENTO DE TIERRAS | 8d | 2024-07-16 | 2024-07-30 | 85 | 0d |
| 87 | 1.8.1.3 | SUMINISTRO E INSTALACION DE TUBERIAS | 4d | 2024-07-30 | 2024-08-05 | 86 | 0d |
| 88 | 1.8.1.4 | SUMINISTRO E INSTALACION DE ACCESORIOS - CONEXIONES DOMICILIARIAS | 8d | 2024-08-05 | 2024-08-17 | 87 | 0d |
